Schedule from MS Project, 2019-05-30 to 2019-08-05, costs in $, A marks actual dates.
diakov.net

## Calendars

- Standard: Mon-Fri 08:00-12:00, 13:00-17:00; Sat-Sun off.

## Resources

| Resource | Rate | Cost per use |
| --- | --- | --- |
| Project Manager | 5 |  |
| Developer1 | 3 |  |
| Testers1 | 2 |  |
| Testers2 | 2 |  |
| Server |  | 1000 |
| Printing |  | 25 |
| Meeting |  | 25 |
| Developer2 | 3 |  |
| Host |  | 45 |

## Schedule

| ID | WBS | Task | Type | Duration | Start | Finish | Predecessors | Complete | Actual finish | Resources | Work | Actual work | Cost | Actual cost | Text7 |
| --- | --- | --- | --- | --- | --- | --- | --- | --- | --- | --- | --- | --- | --- | --- | --- |
| 1 | 1 | **Project manage for Hotel management** |  | 48d? | 2019-05-30 A | 2019-08-05 A |  | 100% |  |  | 640h | 640h | 2,200 | 2,200 |  |
| 2 | 1.1 | **Initiating** |  | 4d? | 2019-05-30 A | 2019-06-04 |  | 100% | 2019-06-03 |  | 32h | 32h | 160 | 160 |  |
| 3 | 1.1.1 | Develop Project Charter | manual | 1d | 2019-05-30 A | 2019-05-30 A |  | 100% |  | Project Manager | 8h | 8h | 40 | 40 |  |
| 4 | 1.1.2 | **Develop Preliminary Project Scope Statement** |  | 3d? | 2019-05-31 A | 2019-06-04 | 3 | 100% | 2019-06-03 |  | 24h | 24h | 120 | 120 |  |
| 5 | 1.1.2.1 | Document Project Costs and Benefits | manual | 2d | 2019-05-31 A | 2019-06-03 A |  | 100% |  | Project Manager | 16h | 16h | 80 | 80 | Benefit Estimating Worksheets, Cost Estimating Worksheets |
| 6 | 1.1.2.2 | Develop High Level WBS | manual | 1d | 2019-06-03 A | 2019-06-03 A | 5 | 100% |  | Project Manager | 8h | 8h | 40 | 40 | Contract Work Breakdown Structure |
| 7 | 1.2 | **Planning** |  | 6d? | 2019-06-05 A | 2019-06-12 A | 2 | 100% |  |  | 88h | 88h | 440 | 440 |  |
| 8 | 1.2.1 | Define Scope | manual | 1d | 2019-06-05 A | 2019-06-05 A |  | 100% |  | Project Manager | 8h | 8h | 40 | 40 |  |
| 9 | 1.2.2 | **Develop Project Schedule** |  | 2d? | 2019-06-06 A | 2019-06-07 A | 8 | 100% |  |  | 32h | 32h | 160 | 160 |  |
| 10 | 1.2.2.1 | Build Work Breakdown Structure | manual | 1d? | 2019-06-06 A | 2019-06-06 A |  | 100% |  | Project Manager | 8h | 8h | 40 | 40 | Detailed Work Breakdown Structure |
| 11 | 1.2.2.2 | Develop Resource Plans | manual | 1d? | 2019-06-06 A | 2019-06-06 A | 10 | 100% |  | Project Manager | 8h | 8h | 40 | 40 | Resource Requirements |
| 12 | 1.2.2.3 | Prepare Project Estimates | manual | 1d? | 2019-06-07 A | 2019-06-07 A | 11 | 100% |  | Project Manager | 8h | 8h | 40 | 40 | Estimating Package |
| 13 | 1.2.2.4 | Define Dependencies and Develop Project Schedule | manual | 1d? | 2019-06-07 A | 2019-06-07 A | 12 | 100% |  | Project Manager | 8h | 8h | 40 | 40 | Project Schedules |
| 14 | 1.2.3 | **Develop Risk Plans** |  | 3d? | 2019-06-10 A | 2019-06-12 | 9 | 100% | 2019-06-11 |  | 32h | 32h | 160 | 160 |  |
| 15 | 1.2.3.1 | Document Risk Management Plan | manual | 1d? | 2019-06-10 A | 2019-06-10 A |  | 100% |  | Project Manager | 8h | 8h | 40 | 40 | Risk Management Plan |
| 16 | 1.2.3.2 | Identify Risks | manual | 1d? | 2019-06-10 A | 2019-06-10 A | 15 | 100% |  | Project Manager | 8h | 8h | 40 | 40 | Risk Management Action Plan |
| 17 | 1.2.3.3 | Analyze Risks | manual | 1d? | 2019-06-11 A | 2019-06-11 A | 16 | 100% |  | Project Manager | 8h | 8h | 40 | 40 | Risk Management Action Plan, Risk Management Log |
| 18 | 1.2.3.4 | Document Risk Management Plans | manual | 1d? | 2019-06-11 A | 2019-06-11 A | 17 | 100% |  | Project Manager | 8h | 8h | 40 | 40 | Risk Management Action Plan, Risk Management Log |
| 19 | 1.2.4 | Develop Financial Plan | manual | 1d | 2019-06-12 A | 2019-06-12 A | 18 | 100% |  | Project Manager | 8h | 8h | 40 | 40 |  |
| 20 | 1.2.5 | Develop Project Management Plan | manual | 1d | 2019-06-12 A | 2019-06-12 A | 19SS | 100% |  | Project Manager | 8h | 8h | 40 | 40 |  |
| 21 | 1.3 | **Analysis/Software Requirements** |  | 6d? | 2019-06-13 A | 2019-06-20 A | 20 | 100% |  |  | 48h | 48h | 240 | 240 |  |
| 22 | 1.3.1 | Conduct needs analysis | manual | 3d | 2019-06-13 A | 2019-06-17 A |  | 100% |  | Project Manager | 24h | 24h | 120 | 120 |  |
| 23 | 1.3.2 | Develop preliminary budget | manual | 1d | 2019-06-18 A | 2019-06-18 A | 22 | 100% |  | Project Manager | 8h | 8h | 40 | 40 |  |
| 24 | 1.3.3 | Incorporate feedback on software specifications | manual | 1d | 2019-06-19 A | 2019-06-19 A | 23 | 100% |  | Project Manager | 8h | 8h | 40 | 40 |  |
| 25 | 1.3.4 | Develop delivery timeline | manual | 1d | 2019-06-20 A | 2019-06-20 A | 24 | 100% |  | Project Manager | 8h | 8h | 40 | 40 |  |

Notes:
- 2: The Initiating Stage does the preliminary analysis to define the project objectives and ensures that further project work is authorized. / Text1: VPEND<VP ID="0_134424" TYP="0" />
- 3: The Project Charter is developed to formally authorize a project. The Project Charter contrains the high level definition of the project and the business justification for the project. / Text1: VPEND<VP ID="0_168547" TYP="0" />
- 4: The preliminary steps necessary to develop the project's goals and objectives and secure commitment to continue the project. / Text1: VPEND<VP ID="0_134428" TYP="0" />
- 5: Perform the cost/benefit analysis for the projects. Document the cash flows, (i.e., benefits minus costs). Document the benefits and risks that cannot be assigned a cash value. / Text1: VPDATA:<VP ID="0_93766" TYP="0"><VP ID="0_11582" TYP="2"><VP ID="0_22576" TYP="3" /></VP><VP ID="0_11581" TYP="2"><VP ID="0_22576" TYP="3" /></VP><VP ID="0_22392" TYP="2"><VP ID="0_22576" TYP="3" /><VP ID="0_22589" TYP="3" /></VP><VP ID="0_18483" TYP="2"> / Text2: VPEND<VP ID="0_21698" TYP="2" /><VP ID="0_21696" TYP="2" /><VP ID="0_21695" TYP="2" /><VP ID="0_21697" TYP="2" /><VP ID="0_107598" TYP="2" /></VP><VP ID="0_12753" TYP="1" /><VP ID="0_12754" TYP="1" /><VP ID="0_17303" TYP="1" /></VP>
- 6: Completely identify all of the work to be performed and organize the work into manageable pieces (subprojects). / Text1: VPEND<VP ID="0_17205" TYP="0"><VP ID="0_83310" TYP="3" /><VP ID="0_17267" TYP="2"><VP ID="0_141952" TYP="3" /><VP ID="0_18168" TYP="3" /></VP><VP ID="0_23913" TYP="2" /><VP ID="0_17303" TYP="1" /></VP>
- 7: The Planning Stage defines the necessary steps to ensure that proper planning is done, during project start-up, before each new phase starts and as part of the change management process / Text1: VPEND<VP ID="0_134450" TYP="0" />
- 8: Establish the Project Scope, WBS and Deliverables necessary to ensure that the objectives defined in the Project Charter are met. / Text1: VPEND<VP ID="0_134455" TYP="0"><VP ID="0_106880" TYP="3" /></VP>
- 9: Identify and assign project resources, determine project activity and task dependencies, develop task estimates develop the project schedule. / Text1: VPEND<VP ID="0_80807" TYP="0"><VP ID="0_83310" TYP="3" /></VP>
- 10: Develop the project structure in terms of detailed phases, activities, tasks, deliverables, and resources. / Text1: VPEND<VP ID="0_17199" TYP="0"><VP ID="0_83310" TYP="3" /><VP ID="0_17263" TYP="2" /><VP ID="0_23913" TYP="2" /><VP ID="0_17303" TYP="1" /></VP>
- 11: Identify resources (human and other) that will be required to successfully deliver the project / Text1: VPEND<VP ID="0_134515" TYP="0"><VP ID="0_134520" TYP="2" /><VP ID="0_17303" TYP="1" /></VP>
- 12: Produce a detailed estimates of the costs and material resources required to deliver each component of the Work Breakdown Structure. / Text1: VPDATA:<VP ID="0_80817" TYP="0"><VP ID="0_107001" TYP="3" /><VP ID="0_17268" TYP="2"><VP ID="0_141975" TYP="3" /></VP><VP ID="0_107598" TYP="2" /><VP ID="0_18483" TYP="2"><VP ID="0_21698" TYP="2" /><VP ID="0_21696" TYP="2" /><VP ID="0_21695" TYP="2" /><VP / Text2: VPEND ID="0_21697" TYP="2" /><VP ID="0_107598" TYP="2" /></VP><VP ID="0_17303" TYP="1" /><VP ID="0_76408" TYP="2" /><VP ID="0_75472" TYP="2" /><VP ID="0_75470" TYP="2" /></VP>
- 13: Define the milestones and phase dates for each component of the Work Breakdown Structure, and identify the dependencies between the work components (the network logic). / Text1: VPEND<VP ID="0_80818" TYP="0"><VP ID="0_107002" TYP="3" /><VP ID="0_80997" TYP="2"><VP ID="0_21750" TYP="3" /></VP><VP ID="0_24032" TYP="2"><VP ID="0_95557" TYP="2" /></VP><VP ID="0_17303" TYP="1" /></VP>
- 14: Identify, analyze and profile project risks, / Text1: VPEND<VP ID="0_134532" TYP="0" />
- 15: Describe the methods and procedures to be used to identify, evaluate, and eliminate or minimize project risks. / Text1: VPEND<VP ID="0_80820" TYP="0"><VP ID="0_17738" TYP="2"><VP ID="0_141958" TYP="3" /><VP ID="0_27000" TYP="3" /></VP><VP ID="0_17303" TYP="1" /><VP ID="0_20510" TYP="1" /></VP>
- 16: Risk identification identifies the risks which if unmanaged could impact the project. / Text1: VPDATA:<VP ID="0_134538" TYP="0"><VP ID="0_16684" TYP="3" /><VP ID="0_17264" TYP="2"><VP ID="0_81338" TYP="3" /><VP ID="0_26558" TYP="3" /></VP><VP ID="0_18438" TYP="2"><VP ID="0_13061" TYP="2" /><VP ID="0_109723" TYP="2" /><VP ID="0_20341" TYP="2" /><VP / Text2: VPDATA:ID="0_122668" TYP="2" /><VP ID="0_109733" TYP="2" /><VP ID="0_20340" TYP="2"><VP ID="0_79735" TYP="3" /><VP ID="0_79733" TYP="3" /><VP ID="0_79736" TYP="3" /><VP ID="0_79731" TYP="3" /><VP ID="0_22284" TYP="3" /></VP><VP ID="0_128110" TYP="2" /><VP / Text3: VPEND ID="0_16725" TYP="2"><VP ID="0_17147" TYP="3" /></VP><VP ID="0_117136" TYP="2" /><VP ID="0_13069" TYP="2" /><VP ID="0_13058" TYP="2"><VP ID="0_87966" TYP="3" /></VP></VP><VP ID="0_17303" TYP="1" /></VP>
- 17: Qualitative and Quantitative Analysis of a project's risks and impacts. The result is a prioritized list of risks. / Text1: VPDATA:<VP ID="0_134548" TYP="0"><VP ID="0_17264" TYP="2"><VP ID="0_81338" TYP="3" /><VP ID="0_26558" TYP="3" /></VP><VP ID="0_79583" TYP="2"><VP ID="0_97978" TYP="3" /><VP ID="0_79585" TYP="3" /></VP><VP ID="0_23044" TYP="2"><VP ID="0_23064" TYP="3" /><V / Text2: VPDATA:P ID="0_97062" TYP="2" /></VP><VP ID="0_87790" TYP="2"><VP ID="0_87795" TYP="3" /><VP ID="0_87797" TYP="3" /><VP ID="0_87798" TYP="3" /><VP ID="0_87799" TYP="3" /></VP><VP ID="0_24111" TYP="2" /><VP ID="0_134557" TYP="2"><VP ID="0_144501" TYP="2" / Text3: VPEND></VP><VP ID="0_17303" TYP="1" /></VP>
- 18: Profile the potential risks to the project by producing specific plans to reduce or eliminate high risk items before they become obstacles to successful project delivery. / Text1: VPDATA:<VP ID="0_17201" TYP="0"><VP ID="0_16684" TYP="3" /><VP ID="0_17264" TYP="2"><VP ID="0_81338" TYP="3" /><VP ID="0_26558" TYP="3" /></VP><VP ID="0_79583" TYP="2"><VP ID="0_97978" TYP="3" /><VP ID="0_79585" TYP="3" /></VP><VP ID="0_18478" TYP="2"><VP / Text2: VPEND ID="0_16684" TYP="3" /><VP ID="0_97978" TYP="3" /><VP ID="0_81338" TYP="3" /><VP ID="0_79585" TYP="3" /><VP ID="0_26558" TYP="3" /></VP><VP ID="0_17303" TYP="1" /><VP ID="0_20510" TYP="1" /></VP>
- 19: Document the expected cash flow as the basis for monitoring the monthly financial performance of the project. / Text1: VPEND<VP ID="0_129442" TYP="0" />
- 20: The Project Management Plan contains the results of the Project Planning Phase and provides the definition against which the project will be delivered. / Text1: VPEND<VP ID="0_168444" TYP="0" />

| ID | WBS | Task | Type | Duration | Start | Finish | Predecessors | Complete | Resources | Work | Actual work | Cost | Actual cost | Text2 | Text7 |
| --- | --- | --- | --- | --- | --- | --- | --- | --- | --- | --- | --- | --- | --- | --- | --- |
| 26 | 1.4 | **Development** |  | 17d | 2019-06-21 A | 2019-07-15 A |  | 100% |  | 272h | 272h | 816 | 816 |  |  |
| 27 | 1.4.1 | Review functional specifications | manual | 1d | 2019-06-21 A | 2019-06-21 A |  | 100% | Developer2; Developer1 | 16h | 16h | 48 | 48 |  |  |
| 28 | 1.4.2 | Identify modular/tiered design parameters | manual | 1d | 2019-06-24 A | 2019-06-24 A | 27 | 100% | Developer2; Developer1 | 16h | 16h | 48 | 48 |  |  |
| 29 | 1.4.3 | Assign development staff | manual | 1d | 2019-06-25 A | 2019-06-25 A | 28 | 100% | Developer2; Developer1 | 16h | 16h | 48 | 48 |  |  |
| 30 | 1.4.4 | Develop code | manual | 7d | 2019-06-26 A | 2019-07-04 A | 29 | 100% | Developer2; Developer1 | 112h | 112h | 336 | 336 |  |  |
| 31 | 1.4.5 | Developer testing (primary debugging) | manual | 7d | 2019-07-05 A | 2019-07-15 A | 30FS-7.5% | 100% | Developer1; Developer2 | 112h | 112h | 336 | 336 |  |  |
| 32 | 1.5 | **Testing** |  | 10d | 2019-07-16 A | 2019-07-29 A | 26 | 100% |  | 152h | 152h | 304 | 304 |  |  |
| 33 | 1.5.1 | Develop unit test plans using product specifications | manual | 2d | 2019-07-16 A | 2019-07-17 A |  | 100% | Testers1 | 16h | 16h | 32 | 32 |  |  |
| 34 | 1.5.2 | Develop integration test plans using product specifications | manual | 2d | 2019-07-16 A | 2019-07-17 A | 33SS | 100% | Testers2 | 16h | 16h | 32 | 32 |  |  |
| 35 | 1.5.3 | **Unit Testing** |  | 8d | 2019-07-18 A | 2019-07-29 A |  | 100% |  | 64h | 64h | 128 | 128 |  |  |
| 36 | 1.5.3.1 | Review modular code | manual | 3d | 2019-07-18 A | 2019-07-22 A | 33 | 100% | Testers1 | 24h | 24h | 48 | 48 |  |  |
| 37 | 1.5.3.2 | Test component modules to product specifications | manual | 1d | 2019-07-23 A | 2019-07-23 A | 36 | 100% | Testers1 | 8h | 8h | 16 | 16 |  |  |
| 38 | 1.5.3.3 | Identify anomalies to product specifications | manual | 2d | 2019-07-24 A | 2019-07-25 A | 37 | 100% | Testers1 | 16h | 16h | 32 | 32 |  |  |
| 39 | 1.5.3.4 | Modify code | manual | 1d | 2019-07-26 A | 2019-07-26 A | 38 | 100% | Testers1 | 8h | 8h | 16 | 16 |  |  |
| 40 | 1.5.3.5 | Re-test modified code | manual | 1d | 2019-07-29 A | 2019-07-29 A | 39 | 100% | Testers1 | 8h | 8h | 16 | 16 |  |  |
| 41 | 1.5.4 | **Integration Testing** |  | 7d | 2019-07-18 A | 2019-07-26 A | 35SS | 100% |  | 56h | 56h | 112 | 112 |  |  |
| 42 | 1.5.4.1 | Test module integration | manual | 3d | 2019-07-18 A | 2019-07-22 A |  | 100% | Testers2 | 24h | 24h | 48 | 48 |  |  |
| 43 | 1.5.4.2 | Identify anomalies to specifications | manual | 2d | 2019-07-23 A | 2019-07-24 A | 42 | 100% | Testers2 | 16h | 16h | 32 | 32 |  |  |
| 44 | 1.5.4.3 | Modify code | manual | 1d | 2019-07-25 A | 2019-07-25 A | 43 | 100% | Testers2 | 8h | 8h | 16 | 16 |  |  |
| 45 | 1.5.4.4 | Re-test modified code | manual | 1d | 2019-07-26 A | 2019-07-26 A | 44 | 100% | Testers2 | 8h | 8h | 16 | 16 |  |  |
| 46 | 1.6 | **Closing** |  | 5d? | 2019-07-30 A | 2019-08-05 A | 32 | 100% |  | 48h | 48h | 240 | 240 |  |  |
| 47 | 1.6.1 | **Close Project** |  | 4d? | 2019-07-30 A | 2019-08-02 A |  | 100% |  | 40h | 40h | 200 | 200 |  |  |
| 48 | 1.6.1.1 | Assess Satisfaction | manual | 1d? | 2019-07-30 A | 2019-07-30 A |  | 100% | Project Manager | 8h | 8h | 40 | 40 | VPEND/></VP> | Stakeholder Satisfaction Form |
| 49 | 1.6.1.2 | Summarize Project Results and Lessons Learned | manual | 1d? | 2019-07-31 A | 2019-07-31 A | 48 | 100% | Project Manager | 8h | 8h | 40 | 40 |  | Project Summary |
| 50 | 1.6.1.3 | Review and Recognize Team Performance | manual | 1d? | 2019-08-01 A | 2019-08-01 A | 49 | 100% | Project Manager | 8h | 8h | 40 | 40 |  | Performance Review, Recognition Programs |
| 51 | 1.6.1.4 | Close Out the Project Records | manual | 1d? | 2019-08-01 A | 2019-08-01 A | 50 | 100% | Project Manager | 8h | 8h | 40 | 40 |  | Project Archives, Project Completion |
| 52 | 1.6.1.5 | Review and Reconcile Financial Performance | manual | 1d? | 2019-08-02 A | 2019-08-02 A | 51 | 100% | Project Manager | 8h | 8h | 40 | 40 |  | Payments |

Notes:
- 46: Close out the project upon completion. / Text1: VPEND<VP ID="0_129436" TYP="0" />
- 47: Make sure that the project is properly closed down, either when project delivery is complete or when the project is terminated for whatever reason. / Text1: VPEND<VP ID="0_81855" TYP="0"><VP ID="0_107335" TYP="3" /></VP>
- 48: Document the overall satisfaction with the project. / Text1: VPDATA:<VP ID="0_129464" TYP="0"><VP ID="0_95586" TYP="2"><VP ID="0_95582" TYP="3" /><VP ID="0_125246" TYP="3" /></VP><VP ID="0_24102" TYP="2"><VP ID="0_95582" TYP="3" /><VP ID="0_125246" TYP="3" /><VP ID="0_18134" TYP="3" /></VP><VP ID="0_17303" TYP="1"
- 49: Work with the project team to capture relevant experience and lessons learned for the benefit of future projects. / Text1: VPEND<VP ID="0_129465" TYP="0"><VP ID="0_17271" TYP="2"><VP ID="0_142020" TYP="3" /></VP><VP ID="0_17303" TYP="1" /></VP>
- 50: Complete performance reviews for each team member, recognize efforts and accomplishments, and celebrate success. / Text1: VPEND<VP ID="0_129475" TYP="0"><VP ID="0_17286" TYP="2" /><VP ID="0_78444" TYP="2" /><VP ID="0_20341" TYP="2" /><VP ID="0_17303" TYP="1" /></VP>
- 51: Update and archive project documentation and make sure that all close out conditions have been met. / Text1: VPEND<VP ID="0_81852" TYP="0"><VP ID="0_129517" TYP="2" /><VP ID="0_129510" TYP="2" /><VP ID="0_17303" TYP="1" /></VP>
- 52: Make sure that all invoices have been delivered and all payments made. / Text1: VPEND<VP ID="0_129488" TYP="0"><VP ID="0_19517" TYP="2" /><VP ID="0_17303" TYP="1" /></VP>

| ID | WBS | Task | Type | Duration | Start | Finish | Predecessors | Complete | Resources | Work | Actual work | Cost | Actual cost | Text7 |
| --- | --- | --- | --- | --- | --- | --- | --- | --- | --- | --- | --- | --- | --- | --- |
| 53 | 1.6.2 | **Contract Closure** |  | 1d | 2019-08-05 A | 2019-08-05 A | 47 | 100% |  | 8h | 8h | 40 | 40 |  |
| 54 | 1.6.2.1 | Close Contract | manual | 1d | 2019-08-05 A | 2019-08-05 A |  | 100% | Project Manager | 8h | 8h | 40 | 40 | Contract Files, Subcontractor Payments |

Notes:
- 53: Blab / Text1: VPEND<VP ID="0_168529" TYP="0" />
- 54: Specific actions required to ensure acceptance of deliverables, process final payments and archive and close out project contract files. / Text1: VPEND<VP ID="0_168537" TYP="0"><VP ID="0_17261" TYP="2" /><VP ID="0_92687" TYP="2" /><VP ID="0_17305" TYP="1" /></VP>
